# Project_mDrivingSchool

Schedule from MS Project, 2016-09-26 to 2017-01-23, costs in kn.
AiR
FOI

## Calendars

- Standard: Mon-Wed 14:00-15:00; Thu 14:00-16:00; Fri 14:00-15:00; Sat-Sun 14:00-16:00.
- Trosatno radno vrijeme: Mon-Fri 14:00-16:00; Sat 14:00-17:00; Sun 14:00-16:00.
- Cetverosatno radno vrijeme: Mon-Tue 14:00-16:00; Wed-Thu 14:00-17:00; Fri 14:00-16:00; Sat-Sun 14:00-18:00.

## Resources

| Resource | Rate | Cost per use | Notes |
| --- | --- | --- | --- |
| Kofjač | 100 |  |  |
| Bunić | 100 |  |  |
| Lazar | 100 |  |  |
| PC |  | 10 | Radno računalo, bilo da to bio laptop ili desktop računalo. |

## Schedule

| ID | WBS | Task | Type | Duration | Start | Finish | Predecessors | Total slack | Free slack | Calendar | Resources | Work | Cost |
| --- | --- | --- | --- | --- | --- | --- | --- | --- | --- | --- | --- | --- | --- |
| 1 | 1 | **mDrivingSchool** |  | 21.31d | 2016-09-26 | 2017-01-23 |  | 0d |  |  |  | 375h | 37,910 |
| 2 | 1.1 | POČETAK PROJEKTA | milestone | 0d | 2016-09-26 | 2016-09-26 |  | 0.09d | 0d |  |  |  |  |
| 3 | 1.2 | **Planiranje teme za projekt** |  | 2.62d | 2016-09-26 | 2016-10-10 | 2 | 0.09d |  |  |  | 63h | 6,310 |
| 4 | 1.2.1 | Sastanak tima(1) |  | 3h | 2016-09-26 | 2016-09-28 | 2 | 0.09d | 0d |  | Kofjač; Bunić; Lazar | 9h | 900 |
| 5 | 1.2.2 | Osmišljavanje teme za projekt |  | 8h | 2016-09-29 | 2016-10-03 | 4 | 0.09d | 0d |  | Kofjač; Bunić; Lazar | 24h | 2,400 |
| 6 | 1.2.3 | Finaliziranje ideje za projekt |  | 4h | 2016-10-04 | 2016-10-06 | 5 | 0.09d | 0d |  | Kofjač; Bunić; Lazar | 12h | 1,200 |
| 7 | 1.2.4 | Odlazak poduzeću na razgovor |  | 3h | 2016-10-07 | 2016-10-08 | 6 | 0.09d | 0d |  | Kofjač; Bunić; Lazar | 9h | 900 |
| 8 | 1.2.5 | Izrada I predaja početnog opisa projekta |  | 3h | 2016-10-09 | 2016-10-10 | 7 | 0.09d | 0d |  | Kofjač; Bunić; Lazar; PC [300%] | 9h | 910 |
| 9 | 1.2.6 | ZAVRŠETAK PLANIRANJA TEME | milestone | 0d | 2016-10-10 | 2016-10-10 | 8 | 0.09d | 0d |  |  |  |  |
| 10 | 1.3 | **Realizacija projekta** |  | 16.34d | 2016-10-22 | 2017-01-22 | 9FS+2.1d | 0d |  |  |  | 306h | 30,990 |
| 11 | 1.3.1 | Izrada projektnog plana I gantograma |  | 6h | 2016-10-22 | 2016-10-27 | 9 | 0.09d | 0d |  | Kofjač; PC | 6h | 610 |
| 12 | 1.3.2 | Sprint planning (1) |  | 1.5h | 2016-10-27 | 2016-10-28 | 11 | 0.09d | 0d |  | Kofjač; Bunić; Lazar; PC [300%] | 4.5h | 460 |
| 13 | 1.3.3 | **Prvi sprint** |  | 2.59d | 2016-10-28 | 2016-11-11 | 12 | 0.06d |  |  |  | 44h | 4,480 |
| 14 | 1.3.3.1 | **Osnovni dizajn sučelja** |  | 2.21d | 2016-10-28 | 2016-11-09 | 11 | 0d |  |  |  | 39h | 3,960 |
| 15 | 1.3.3.1.1 | Vozila |  | 5h | 2016-10-28 | 2016-10-30 | 12 | 0.09d | 0d | Trosatno radno vrijeme | Kofjač; PC | 5h | 510 |
| 16 | 1.3.3.1.2 | Login ekran |  | 3h | 2016-10-30 | 2016-10-31 | 15 | 0.09d | 0d | Trosatno radno vrijeme | Kofjač; PC | 3h | 310 |
| 17 | 1.3.3.1.3 | Kontakti |  | 4h | 2016-10-31 | 2016-11-02 | 16 | 0.09d | 0d | Trosatno radno vrijeme | Bunić; PC | 4h | 410 |
| 18 | 1.3.3.1.4 | O nama |  | 2h | 2016-11-02 | 2016-11-03 | 17 | 0.09d | 0d | Trosatno radno vrijeme | Lazar; PC | 2h | 210 |
| 19 | 1.3.3.1.5 | Dizajn početnog ekrana |  | 5h | 2016-11-03 | 2016-11-05 | 18 | 0.09d | 0d | Trosatno radno vrijeme | Bunić; Lazar; PC [200%] | 10h | 1,010 |
| 20 | 1.3.3.1.6 | Usklađivanje svih elemenata |  | 5h | 2016-11-06 | 2016-11-09 | 19 | 0d |  |  | Kofjač; Bunić; Lazar; PC [300%] | 15h | 1,510 |
| 21 | 1.3.3.2 | **Predaja zahtjeva za upis u autoškolu** |  | 0.38d | 2016-11-09 | 2016-11-11 | 20 | 0d |  |  |  | 5h | 520 |
| 22 | 1.3.3.2.1 | Kreiranje forme online upisa |  | 2h | 2016-11-09 | 2016-11-10 | 20 | 0.06d | 0d | Trosatno radno vrijeme | Kofjač; PC | 2h | 210 |
| 23 | 1.3.3.2.2 | Stavljanje forme online upisa u funkciju |  | 3h | 2016-11-10 | 2016-11-11 | 22 | 0.06d | 0d | Trosatno radno vrijeme | Kofjač; PC | 3h | 310 |
| 24 | 1.3.4 | Sprint review (1) |  | 1.5h | 2016-11-12 | 2016-11-12 | 23 | 0.06d | 0d |  | Kofjač; Bunić; Lazar; PC [300%] | 4.5h | 460 |
| 25 | 1.3.5 | Izrada dokumentacije prve faze |  | 8h | 2016-11-12 | 2016-11-14 | 24 | 0.12d | 0.06d | Cetverosatno radno vrijeme | Kofjač; Bunić; Lazar; PC [300%] | 24h | 2,410 |
| 26 | 1.3.6 | PREDAJA PRVE FAZE PROJEKTA | milestone | 0d | 2016-11-15 | 2016-11-15 | 25 | 0d |  |  |  |  |  |
| 27 | 1.3.7 | Sprint planning (2) |  | 1.5h | 2016-11-15 | 2016-11-16 | 26 | 0d |  |  | Kofjač; Bunić; Lazar; PC [300%] | 4.5h | 460 |

Notes:
- 5: Osmišljavanje se provodilo metodama brainstorminga i brainwritinga.
- 7: Odlazak autoškoli Premuž na razgovor za dobivanje pisma preporuke.
- 20: Ovaj item ne postoji na Product backlog-u no morao je biti dodan kako bi se prikazali sati koji su upisani pod glavni item "Osnovni dizajn sučelja".

| ID | WBS | Task | Type | Duration | Start | Finish | Predecessors | Total slack | Free slack | Calendar | Resources | Work | Cost |
| --- | --- | --- | --- | --- | --- | --- | --- | --- | --- | --- | --- | --- | --- |
| 28 | 1.3.8 | **Drugi sprint** |  | 2.5d | 2016-11-16 | 2016-11-30 | 27 | 0d |  |  |  | 26h | 2,650 |
| 29 | 1.3.8.1 | Lokacija autoškole |  | 3h | 2016-11-16 | 2016-11-17 | 27 | 0.06d | 0d | Trosatno radno vrijeme | Bunić; PC | 3h | 310 |
| 30 | 1.3.8.2 | Prijava korisnika u aplikaciju |  | 5h | 2016-11-18 | 2016-11-20 | 29 | 0.06d | 0d |  | Lazar; PC | 5h | 510 |
| 31 | 1.3.8.3 | **Testovi znanja** |  | 1.62d | 2016-11-21 | 2016-11-30 | 30 | 0.06d |  |  |  | 18h | 1,830 |
| 32 | 1.3.8.3.1 | Izrada dizajna testova znanja |  | 5h | 2016-11-21 | 2016-11-24 | 30 | 0.06d | 0d |  | Kofjač; Bunić; PC [200%] | 10h | 1,010 |
| 33 | 1.3.8.3.2 | Testovi znanja iz propisa |  | 5h | 2016-11-25 | 2016-11-27 | 32 | 0.06d | 0d |  | Kofjač; PC | 5h | 510 |
| 34 | 1.3.8.3.3 | Testovi znanja iz prve pomoći |  | 3h | 2016-11-28 | 2016-11-30 | 33 | 0.06d | 0d |  | Bunić; PC | 3h | 310 |
| 35 | 1.3.9 | Sprint review (2) |  | 1.5h | 2016-12-01 | 2016-12-01 | 34 | 0.19d | 0d |  | Kofjač; Bunić; Lazar; PC [300%] | 4.5h | 460 |
| 36 | 1.3.10 | Sprint planning (3) |  | 1.5h | 2016-12-01 | 2016-12-02 | 35 | 0.19d | 0.12d |  | Kofjač; Bunić; Lazar; PC [300%] | 4.5h | 460 |
| 37 | 1.3.11 | **Treći sprint** |  | 2.62d | 2016-12-03 | 2016-12-17 | 34FS+0.5d | 0.06d |  |  |  | 44h | 4,460 |
| 38 | 1.3.11.1 | Dodavanje polaznika |  | 2h | 2016-12-03 | 2016-12-04 | 36 | 0.06d | 0d |  | Kofjač; Lazar; PC [200%] | 4h | 410 |
| 39 | 1.3.11.2 | **Prilagođeni dizajn prema ovlastima** |  | 1.69d | 2016-12-04 | 2016-12-14 | 38 | 0.06d |  |  |  | 24h | 2,440 |
| 40 | 1.3.11.2.1 | Dorada sučelja neregistriranog korisnika |  | 3h | 2016-12-04 | 2016-12-06 | 38 | 0.06d | 0d |  | Kofjač; PC | 3h | 310 |
| 41 | 1.3.11.2.2 | Izrada sučelja zaposlenika |  | 3h | 2016-12-07 | 2016-12-08 | 40 | 0.06d | 0d |  | PC [200%]; Bunić; Lazar | 6h | 610 |
| 42 | 1.3.11.2.3 | Izrada sučelja polaznika |  | 3h | 2016-12-09 | 2016-12-10 | 41 | 0.06d | 0d |  | Kofjač; Lazar; PC [200%] | 6h | 610 |
| 43 | 1.3.11.2.4 | Popratne aktivnosti dizajna |  | 4.5h | 2016-12-11 | 2016-12-14 | 42 | 0.06d | 0d |  | Bunić; Lazar; PC | 9h | 910 |
| 44 | 1.3.11.3 | Informacije o polaznicima |  | 8h | 2016-12-14 | 2016-12-17 | 43 | 0.16d | 0d | Trosatno radno vrijeme | Bunić; Lazar; PC [200%] | 16h | 1,610 |
| 45 | 1.3.12 | Sprint review (3) |  | 1.5h | 2016-12-18 | 2016-12-18 | 44 | 0.1d | 0d |  | Kofjač; Bunić; Lazar; PC [300%] | 4.5h | 460 |
| 46 | 1.3.13 | Sprint planning (4) |  | 1.5h | 2016-12-18 | 2016-12-19 | 45 | 0.1d | 0d |  | Kofjač; Bunić; Lazar; PC [300%] | 4.5h | 460 |
| 47 | 1.3.14 | **Četvrti sprint (početak)** |  | 0.38d | 2016-12-21 | 2016-12-23 | 46FS+0.2d | 0.1d |  |  |  | 6h | 610 |
| 48 | 1.3.14.1 | Dodjela polaznika instruktoru |  | 3h | 2016-12-21 | 2016-12-23 | 46 | 0.1d | 0d |  | Kofjač; Lazar; PC [200%] | 6h | 610 |
| 49 | 1.3.15 | Izrada dokumentacije druge faze |  | 12h | 2016-12-23 | 2016-12-31 | 48 | 0.1d | 0d |  | Kofjač; Bunić; Lazar; PC [300%] | 36h | 3,610 |
| 50 | 1.3.16 | PREDAJA DRUGE FAZE PROJEKTA | milestone | 0d | 2017-01-07 | 2017-01-07 | 49FS+1.2d | 0.1d | 0d |  |  |  |  |
| 51 | 1.3.17 | **Četvrti sprint (nastavak)** |  | 1.98d | 2017-01-07 | 2017-01-18 | 50 | 0d |  |  |  | 66h | 6,670 |
| 52 | 1.3.17.1 | Slanje obavijesti polaznicima |  | 8h | 2017-01-07 | 2017-01-09 | 50 | 0.1d | 0d | Cetverosatno radno vrijeme | Bunić; PC | 8h | 810 |
| 53 | 1.3.17.2 | Informacije o prošlim ispitima |  | 3h | 2017-01-09 | 2017-01-11 | 52 | 0.1d | 0d | Cetverosatno radno vrijeme | Kofjač; Lazar; PC [200%] | 6h | 610 |
| 54 | 1.3.17.3 | Raspored vožnje |  | 8h | 2017-01-11 | 2017-01-14 | 53 | 0.1d | 0d | Cetverosatno radno vrijeme | Kofjač; Bunić; Lazar; PC [300%] | 24h | 2,410 |
| 55 | 1.3.17.4 | Status broja sati vožnje polaznika |  | 5h | 2017-01-14 | 2017-01-15 | 54 | 0.1d | 0d | Cetverosatno radno vrijeme | Kofjač; Lazar; PC [200%] | 10h | 1,010 |
| 56 | 1.3.17.5 | Ažuriranje rezultata polaznika na ispitima |  | 3h | 2017-01-15 | 2017-01-16 | 55 | 0.1d | 0d | Cetverosatno radno vrijeme | Kofjač; Lazar; PC [200%] | 6h | 610 |
| 57 | 1.3.17.6 | Realizacija reklama u aplikaciji |  | 3h | 2017-01-16 | 2017-01-17 | 56 | 0.1d | 0d | Cetverosatno radno vrijeme | Kofjač; PC | 3h | 310 |
| 58 | 1.3.17.7 | Testiranje I završna dorada aplikacije |  | 3h | 2017-01-17 | 2017-01-18 | 57 | 0.1d | 0d | Cetverosatno radno vrijeme | Kofjač; Bunić; Lazar; PC [300%] | 9h | 910 |
| 59 | 1.3.18 | Sprint review (4) |  | 1.5h | 2017-01-19 | 2017-01-19 | 58 | 0d |  |  | Kofjač; Bunić; Lazar; PC [300%] | 4.5h | 460 |
| 60 | 1.3.19 | Izrada završne verzije dokumentacije |  | 6h | 2017-01-19 | 2017-01-22 | 59 | 0d |  | Trosatno radno vrijeme | Kofjač; Bunić; Lazar; PC [300%] | 18h | 1,810 |
| 61 | 1.4 | Prezentacija I obrana projekta |  | 2h | 2017-01-22 | 2017-01-23 | 60 | 0d |  |  | Kofjač; Bunić; Lazar; PC [300%] | 6h | 610 |
| 62 | 1.5 | ZAVRŠEN PROJEKT | milestone | 0d | 2017-01-23 | 2017-01-23 | 61 | 0d |  |  |  |  |  |

Notes:
- 43: Ovaj item ne postoji na Product backlog-u no morao je biti dodan kako bi se prikazali sati koji su upisani pod glavni item "Prilagođeni dizajn prema ovlastima".
